# Gantt_chart

How a schedule from MS Project changed from version to version. A marks actual dates.

## Version 1 (saved 2010-01-10)

Note of the change: Update Init and Plan

| ID | WBS | Task | Duration | Start | Finish | Predecessors | Total float | Constraint |
| --- | --- | --- | --- | --- | --- | --- | --- | --- |
| 1 | 1 | **Preparation (Chuẩn bị)** | 15d? | 2009-09-23 | 2009-10-09 |  | 0d |  |
| 2 | 1.1 | **Build Team** | 4d? | 2009-09-23 | 2009-09-26 |  | 0d |  |
| 3 |  | Choose members | 3d | 2009-09-23 | 2009-09-25 |  | 0d |  |
| 4 |  | Choose team leader | 1d? | 2009-09-26 | 2009-09-26 | 3 | 0d |  |
| 5 | 1.2 | **Traning** | 11d? | 2009-09-28 | 2009-10-09 | 2 | 0d |  |
| 6 |  | Business Process | 3d | 2009-09-28 | 2009-09-30 |  | 0d | finish no earlier than 2009-09-24 |
| 7 |  | Analyse sample apps | 3d | 2009-09-28 | 2009-09-30 |  | 0d | finish no earlier than 2009-09-26 |
| 8 | 1.2.3 | **Technical training** | 8d? | 2009-10-01 | 2009-10-09 | 6, 7 | 0d |  |
| 9 |  | ASP.NET | 4d? | 2009-10-01 | 2009-10-05 |  | 0d | finish no earlier than 2009-09-30 |
| 10 |  | ASP.NET MVC Framework | 4d? | 2009-10-06 | 2009-10-09 | 9 | 0d | finish no earlier than 2009-10-03 |
| 11 |  | LINQ | 2d? | 2009-10-06 | 2009-10-07 | 9 | 2d | finish no earlier than 2009-10-05 |
| 12 |  | Planning | 2d? | 2009-10-06 | 2009-10-07 | 2 | 2d | finish no earlier than 2009-10-07 |
| 13 | 2 | **Inception (Khởi động)** | 9d | 2009-10-10 | 2009-10-20 | 1 | 0d |  |
| 14 |  | Requirements gathering | 3d | 2009-10-10 | 2009-10-13 |  | 0d | finish no earlier than 2009-10-09 |
| 15 | 2.2 | **Requirements specification** | 6d | 2009-10-14 | 2009-10-20 | 14 | 0d |  |
| 16 |  | Use-cases | 3d | 2009-10-14 | 2009-10-16 |  | 0d | start no earlier than 2009-10-10 |
| 17 |  | Sequence Diagrams | 3d | 2009-10-17 | 2009-10-20 | 16 | 0d | finish no earlier than 2009-10-13 |
| 18 |  | Review and Validate Requirements | 0d | 2009-10-20 | 2009-10-20 | 15 | 0d | finish no earlier than 2009-10-15 |
| 19 | 3 | **Elaboration: Analyse and Design** | 19d? | 2009-10-21 | 2009-11-11 | 13 | 0d |  |
| 20 | 3.1 | **Class Diagram** | 11d | 2009-10-21 | 2009-11-02 | 18 | 0d |  |
| 21 |  | Identify Objects | 2d | 2009-10-21 | 2009-10-22 |  | 0d |  |
| 22 |  | Objects Relationship | 2d | 2009-10-23 | 2009-10-24 | 21 | 0d |  |
| 23 |  | Identify Methods and Properties of Objects | 4d | 2009-10-26 | 2009-10-29 | 22 | 0d |  |
| 24 |  | Review and Evaluate Class Diagram | 3d | 2009-10-30 | 2009-11-02 | 23 | 0d |  |
| 25 | 3.2 | **DB Design** | 8d? | 2009-11-03 | 2009-11-11 | 20 | 0d |  |
| 26 |  | Data Flow Diagram | 2d | 2009-11-03 | 2009-11-04 |  | 0d |  |
| 27 |  | Logical Diagram (ERD) | 2d | 2009-11-05 | 2009-11-06 | 26 | 0d |  |
| 28 |  | Physical Diagram - MSSQL Server Express 2005 | 3d | 2009-11-07 | 2009-11-10 | 27 | 0d |  |
| 29 |  | Review DB | 1d? | 2009-11-11 | 2009-11-11 | 28 | 0d |  |
| 30 |  | User Interface Design | 6d | 2009-10-21 | 2009-10-27 | 18 | 13d | finish no earlier than 2009-10-19 |
| 31 |  | Design review and evaluation | 0d | 2009-11-11 | 2009-11-11 | 20, 25, 30 | 0d |  |
| 32 | 4 | **Construction (Thực hiện)** | 42d? | 2009-11-12 | 2009-12-30 | 13, 19 | 0d |  |
| 33 |  | Code Convention | 2d | 2009-11-12 | 2009-11-13 |  | 0d | finish no earlier than 2009-10-26 |
| 34 | 4.2 | **System implementation** | 18d? | 2009-11-14 | 2009-12-04 | 33 | 0d |  |
| 35 | 4.2.1 | **Project Administration** | 10d? | 2009-11-14 | 2009-11-25 |  | 0d |  |
| 36 |  | Projects of Each User | 3d | 2009-11-14 | 2009-11-17 |  | 0d | finish no earlier than 2009-10-28 |
| 37 |  | Milestones of Project | 2d? | 2009-11-18 | 2009-11-19 | 36 | 2d | start no earlier than 2009-10-29 |
| 38 |  | Tasklists and Tasks | 3d | 2009-11-20 | 2009-11-23 | 37 | 2d | finish no earlier than 2009-11-02 |
| 39 |  | Calendar | 4d | 2009-11-18 | 2009-11-21 | 36 | 0d | finish no earlier than 2009-10-31 |
| 40 |  | Time-tracker | 3d | 2009-11-18 | 2009-11-20 | 36 | 4d |  |
| 41 |  | Dashboard | 3d | 2009-11-23 | 2009-11-25 | 36, 39 | 0d |  |
| 42 | 4.2.2 | **User Administration** | 3d | 2009-11-26 | 2009-11-28 | 35 | 0d |  |
| 43 |  | Manage Users of Each Project | 2d | 2009-11-26 | 2009-11-27 |  | 1d |  |
| 44 |  | Role & Authorization | 3d | 2009-11-26 | 2009-11-28 |  | 0d |  |
| 45 | 4.2.3 | **System Administration** | 5d | 2009-11-30 | 2009-12-04 | 35, 42 | 0d |  |
| 46 |  | System Config | 2d | 2009-11-30 | 2009-12-01 |  | 0d |  |
| 47 |  | Manage All Projects & Users | 3d | 2009-12-02 | 2009-12-04 | 46 | 0d |  |
| 48 |  | Improve GUI | 5d | 2009-11-18 | 2009-11-23 | 36 | 10d |  |
| 49 | 4.3 | **Technical documentation** | 10d | 2009-11-26 | 2009-12-07 |  | 6d |  |
| 50 |  | Project API Reference | 2d | 2009-11-26 | 2009-11-27 | 35 | 14d |  |
| 51 |  | User & Role API Reference | 2d | 2009-11-30 | 2009-12-01 | 42 | 11d |  |
| 52 |  | System Config API Reference | 2d | 2009-12-05 | 2009-12-07 | 45 | 6d |  |
| 53 | 4.4 | **User documentation** | 4d | 2009-12-08 | 2009-12-11 | 49 | 6d |  |
| 54 |  | User Guide | 4d | 2009-12-08 | 2009-12-11 |  | 6d |  |
| 55 |  | FAQ | 2d | 2009-12-08 | 2009-12-09 |  | 8d |  |
| 56 | 4.5 | **Testing** | 10d | 2009-12-05 | 2009-12-16 | 34 | 0d |  |
| 57 |  | Test planning | 2d | 2009-12-05 | 2009-12-07 |  | 0d |  |
| 58 |  | Test Workflow | 3d | 2009-12-08 | 2009-12-10 | 57 | 0d |  |
| 59 |  | Test code implementation | 3d | 2009-12-11 | 2009-12-14 | 58 | 0d |  |
| 60 |  | Test performance | 2d | 2009-12-15 | 2009-12-16 | 59 | 0d |  |
| 61 |  | Implementation review and evaluation | 2d | 2009-12-17 | 2009-12-18 | 34, 56 | 0d |  |
| 62 |  | Release beta version 1.0 | 0d | 2009-12-18 | 2009-12-18 | 34, 53, 56, 61 | 0d | start no earlier than 2009-11-25 |
| 63 | 4.8 | **Feedback & Response** | 10d | 2009-12-19 | 2009-12-30 | 62 | 0d |  |
| 64 |  | Receive Feedbacks | 10d | 2009-12-19 | 2009-12-30 |  | 0d |  |
| 65 |  | Improve and Fix bugs | 6d | 2009-12-19 | 2009-12-25 |  | 4d |  |
| 66 |  | Release version RC 1.0 | 0d | 2009-12-30 | 2009-12-30 | 63 | 0d | start no earlier than 2009-12-07 |
| 67 | 5 | **Transition (Triển khai)** | 4d | 2009-12-30 | 2010-01-04 | 32 | 0d |  |
| 68 |  | Release final packaging: official 1.0 | 0d | 2009-12-30 | 2009-12-30 | 66 | 4d |  |
| 69 |  | Finish Documentation | 4d | 2009-12-31 | 2010-01-04 | 32 | 0d |  |
| 70 | 6 | **Reflection (Nhận xét, đánh giá)** | 3d? | 2010-01-05 | 2010-01-07 | 67 | 2d |  |

| ID | Task | Duration | Start | Finish | Predecessors | Total float |
| --- | --- | --- | --- | --- | --- | --- |
| 71 | Cost Report | 1d? | 2010-01-05 | 2010-01-05 |  | 2d |
| 72 | Product Evaluation | 1d | 2010-01-06 | 2010-01-06 | 71 | 2d |
| 73 | Lessons Learned | 1d | 2010-01-07 | 2010-01-07 | 71, 72 | 2d |
| 74 | Maintenance (Bảo trì) | 5d | 2010-01-05 | 2010-01-09 | 67 | 0d |

## Version 2 (saved 2010-11-03)

Note of the change: Upgrade EPM to .NET 4.0 with VS 2010. Update document.

Last finish stays 2010-01-09.

Changed:

| ID | Task | Other |
| --- | --- | --- |
| 2 | **Build Team** | resources HảiLD; ToànNM; HưngVN; MẫnVHT → Hải; Toàn; Hưng; Mẫn |
| 5 | **Traning** | resources HảiLD; ToànNM; HưngVN; MẫnVHT → Hải; Toàn; Hưng; Mẫn |
| 6 | Business Process | resources HưngVN → Hưng |
| 7 | Analyse sample apps | resources HảiLD; MẫnVHT → Hải; Mẫn |
| 8 | **Technical training** | resources HảiLD; ToànNM; HưngVN; MẫnVHT → Hải; Toàn; Hưng; Mẫn |
| 9 | ASP.NET | resources HảiLD; ToànNM; MẫnVHT → Hải; Toàn; Mẫn |
| 10 | ASP.NET MVC Framework | resources HảiLD; ToànNM; MẫnVHT → Hải; Toàn; Mẫn |
| 11 | LINQ | resources MẫnVHT → Mẫn |
| 12 | Planning | resources HưngVN → Hưng |
| 14 | Requirements gathering | resources HưngVN; HảiLD → Hưng; Hải |
| 16 | Use-cases | resources HảiLD; MẫnVHT → Hải; Mẫn |
| 17 | Sequence Diagrams | resources ToànNM; MẫnVHT → Toàn; Mẫn |
| 18 | Review and Validate Requirements | resources HảiLD; HưngVN; MẫnVHT; ToànNM → Hải; Hưng; Mẫn; Toàn |
| 21 | Identify Objects | resources HảiLD; MẫnVHT → Hải; Mẫn |
| 22 | Objects Relationship | resources MẫnVHT; ToànNM → Mẫn; Toàn |
| 23 | Identify Methods and Properties of Objects | resources HảiLD; ToànNM → Hải; Toàn |
| 24 | Review and Evaluate Class Diagram | resources HảiLD; HưngVN; MẫnVHT; ToànNM → Hải; Hưng; Mẫn; Toàn |
| 26 | Data Flow Diagram | resources HảiLD; HưngVN → Hải; Hưng |
| 27 | Logical Diagram (ERD) | resources HảiLD → Hải |
| 28 | Physical Diagram - MSSQL Server Express 2005 | resources HưngVN → Hưng |
| 29 | Review DB | resources HảiLD; HưngVN; MẫnVHT; ToànNM → Hải; Hưng; Mẫn; Toàn |
| 30 | User Interface Design | resources ToànNM → Toàn |
| 31 | Design review and evaluation | resources HảiLD; HưngVN; MẫnVHT; ToànNM → Hải; Hưng; Mẫn; Toàn |
| 33 | Code Convention | resources HưngVN → Hưng |
| 36 | Projects of Each User | resources HảiLD → Hải |
| 37 | Milestones of Project | resources HảiLD → Hải |
| 38 | Tasklists and Tasks | resources HảiLD → Hải |
| 39 | Calendar | resources HưngVN → Hưng |
| 40 | Time-tracker | resources ToànNM → Toàn |
| 41 | Dashboard | resources MẫnVHT → Mẫn |
| 43 | Manage Users of Each Project | resources ToànNM → Toàn |
| 44 | Role & Authorization | resources HưngVN → Hưng |
| 46 | System Config | resources MẫnVHT → Mẫn |
| 47 | Manage All Projects & Users | resources MẫnVHT → Mẫn |
| 48 | Improve GUI | resources ToànNM → Toàn |
| 50 | Project API Reference | resources HảiLD → Hải |
| 51 | User & Role API Reference | resources HưngVN → Hưng |
| 52 | System Config API Reference | resources MẫnVHT → Mẫn |
| 54 | User Guide | resources ToànNM; HưngVN → Toàn; Hưng |
| 55 | FAQ | resources HảiLD; MẫnVHT → Hải; Mẫn |
| 57 | Test planning | resources HưngVN → Hưng |
| 58 | Test Workflow | resources HảiLD; ToànNM → Hải; Toàn |
| 59 | Test code implementation | resources HảiLD; MẫnVHT → Hải; Mẫn |
| 60 | Test performance | resources ToànNM; MẫnVHT → Toàn; Mẫn |
| 61 | Implementation review and evaluation | resources HảiLD; HưngVN; MẫnVHT; ToànNM → Hải; Hưng; Mẫn; Toàn |
| 62 | Release beta version 1.0 | resources HảiLD; HưngVN; MẫnVHT; ToànNM → Hải; Hưng; Mẫn; Toàn |
| 64 | Receive Feedbacks | resources HưngVN → Hưng |
| 65 | Improve and Fix bugs | resources HảiLD; MẫnVHT; ToànNM → Hải; Mẫn; Toàn |
| 66 | Release version RC 1.0 | resources ToànNM → Toàn |
| 68 | Release final packaging: official 1.0 | resources MẫnVHT → Mẫn |
| 69 | Finish Documentation | resources HảiLD; HưngVN; MẫnVHT; ToànNM → Hải; Hưng; Mẫn; Toàn |
| 71 | Cost Report | resources HưngVN → Hưng |
| 72 | Product Evaluation | resources HảiLD; MẫnVHT → Hải; Mẫn |
| 73 | Lessons Learned | resources HưngVN → Hưng |
| 74 | Maintenance (Bảo trì) | resources HảiLD; HưngVN; MẫnVHT; ToànNM → Hải; Hưng; Mẫn; Toàn |
